# 进度安排

How a schedule from MS Project changed from version to version. A marks actual dates.

## Version 1 (saved 2009-09-30)

Note of the change: transfer from opensvn

| ID | WBS | Task | Duration | Start | Finish | Predecessors | Complete | Total float | Constraint |
| --- | --- | --- | --- | --- | --- | --- | --- | --- | --- |
| 1 | 1 | **公告栏** | 2d? | 2009-09-21 A | 2009-09-22 A |  | 100% |  |  |
| 2 |  | 公告发布,公告显示 | 1d? | 2009-09-21 A | 2009-09-21 A |  | 100% |  |  |
| 3 |  | 公告管理 | 1d? | 2009-09-22 A | 2009-09-22 A |  | 100% |  | start no earlier than 2009-09-22 |
| 4 | 2 | **留言板** | 2d? | 2009-09-23 A | 2009-09-24 A |  | 100% |  |  |
| 5 |  | 个人留言/查看留言/删除留言 | 1d? | 2009-09-23 A | 2009-09-23 A |  | 100% |  | start no earlier than 2009-09-23 |
| 6 |  | 管理员查看/删除留言 | 1d? | 2009-09-24 A | 2009-09-24 A | 5 | 100% |  | start no earlier than 2009-09-24 |
| 7 | 3 | **个人信息管理** | 6d? | 2009-09-25 A | 2009-09-30 A | 6 | 100% |  |  |
| 8 |  | 基本信息管理 | 1d? | 2009-09-25 A | 2009-09-25 A |  | 100% |  | start no earlier than 2009-09-25 |
| 9 |  | 修改密码 | 1d? | 2009-09-26 A | 2009-09-26 A | 8 | 100% |  | start no earlier than 2009-09-26 |
| 10 |  | 会议模板设置 | 4d | 2009-09-27 A | 2009-09-30 A | 9 | 100% |  | start no earlier than 2009-09-27 |
| 11 | 4 | **会议预约** | 7d? | 2009-10-01 | 2009-10-07 |  |  | 37d |  |
| 12 |  | 预约会议 | 3d | 2009-10-01 | 2009-10-03 |  |  | 37d | start no earlier than 2009-10-01 |
| 13 |  | 变更预约申请 | 2d? | 2009-10-04 | 2009-10-05 | 12 |  | 37d | finish no earlier than 2009-10-05 |
| 14 |  | 会议审批列表 | 2d? | 2009-10-06 | 2009-10-07 | 13 |  | 37d | start no earlier than 2009-10-06 |
| 15 | 5 | **资源管理** | 13d? | 2009-10-06 | 2009-10-18 |  |  | 42d |  |
| 16 |  | 资源占用情况 | 3d? | 2009-10-06 | 2009-10-08 |  |  | 26d | start no earlier than 2009-10-06 |
| 17 |  | 可用资源 | 3d? | 2009-10-09 | 2009-10-11 | 16 |  | 26d | start no earlier than 2009-10-09 |
| 18 |  | 正在召开的会议 | 2d | 2009-10-12 | 2009-10-13 | 17 |  | 26d | start no earlier than 2009-10-12 |
| 19 |  | 当日会议安排 | 2d | 2009-10-14 | 2009-10-15 | 18 |  | 26d | start no earlier than 2009-10-14 |
| 20 |  | 本周会议安排 | 1d? | 2009-10-16 | 2009-10-16 | 19 |  | 42d | start no earlier than 2009-10-16 |
| 21 |  | 本月会议安排 | 1d? | 2009-10-17 | 2009-10-17 | 20 |  | 42d | start no earlier than 2009-10-17 |
| 22 |  | 所有会议安排 | 1d | 2009-10-18 | 2009-10-18 | 21 |  | 42d | start no earlier than 2009-10-18 |
| 23 | 6 | **统计分析** | 4d | 2009-10-16 | 2009-10-19 |  |  | 36d |  |
| 24 |  | 用户使用次数排行 | 2d | 2009-10-16 | 2009-10-17 |  |  | 36d | start no earlier than 2009-10-16 |
| 25 |  | 用户会议召开次数排行 | 1d | 2009-10-18 | 2009-10-18 | 24 |  | 36d | start no earlier than 2009-10-18 |
| 26 |  | 用户单日会议召开次数排行 | 1d | 2009-10-19 | 2009-10-19 | 25 |  | 36d | start no earlier than 2009-10-19 |
| 27 | 7 | **日志管理** | 2d? | 2009-10-20 | 2009-10-21 |  |  | 36d |  |
| 28 |  | 日志记录 | 1d? | 2009-10-20 | 2009-10-20 | 26 |  | 36d | start no earlier than 2009-10-20 |
| 29 |  | 日志查询 | 1d? | 2009-10-21 | 2009-10-21 | 28 |  | 36d | start no earlier than 2009-09-26 |
| 30 |  | 外部系统 | 3d? | 2009-10-22 | 2009-10-24 | 29 |  | 36d | start no earlier than 2009-10-22 |
| 31 |  | 系统测试 | 7d? | 2009-10-20 | 2009-10-26 | 30 |  | 30d | start no earlier than 2009-10-20 |
| 32 |  | 文档编写 | 4d | 2009-11-27 | 2009-11-30 | 31 |  | 0d | start no earlier than 2009-11-27 |

## Version 2 (saved 2009-10-01)

Last finish stays 2009-11-30. Complete tasks 7 → 9.

Added:

| ID | Task | Duration | Start | Finish | Predecessors | Constraint | Resources |
| --- | --- | --- | --- | --- | --- | --- | --- |
| 9 | 基本信息后台管理 | 2d | 2009-09-26 A | 2009-09-27 A | 8 | start no earlier than 2009-09-25 | 卢菊平 |
| 12 | 虚拟房间后台管理 | 2d | 2009-10-01 | 2009-10-02 | 11 | start no earlier than 2009-09-27 | 卢菊平 |
| 18 | 会议模板 | 2d | 2009-09-29 A | 2009-09-30 A |  | start no earlier than 2009-09-29 | 卢菊平 |

Changed:

| ID | Task | Start | Finish | Duration | Complete | Total float | Predecessors | Other |
| --- | --- | --- | --- | --- | --- | --- | --- | --- |
| 7 | **个人信息管理** |  | 2009-09-30 A → 2009-10-02 (+2d) | 6d? → 8d? | 100% → 80% | none → 58d |  |  |
| 10 | 修改密码 |  |  |  |  |  | 8 → 9 |  |
| 11 | 虚拟房间设置 |  |  |  |  |  |  | was named 会议模板设置 |
| 17 | **资源管理** | 2009-10-06 → 2009-09-29 A (-7d) |  | 13d? → 20d? | 0% → 13% |  |  |  |

## Version 3 (saved 2009-10-02)

Last finish 2009-11-30 → 2009-10-30 (-31d). Complete tasks 9 → 10.

Added:

| ID | Task | Duration | Start | Finish | Predecessors | Constraint | Resources |
| --- | --- | --- | --- | --- | --- | --- | --- |
| 13 | 终端列表 | 1d | 2009-10-03 | 2009-10-03 | 12 | start no earlier than 2009-09-27 | 卢菊平 |
| 14 | 参会单位 | 1d | 2009-10-01 | 2009-10-01 | 11 | start no earlier than 2009-09-27 | 李海武 |
| 21 | 预约管理 | 2d? | 2009-10-05 | 2009-10-06 | 20 | finish no earlier than 2009-10-05 | 李海武 |

Removed: 15 变更预约申请; 16 会议审批列表

Changed:

| ID | Task | Start | Finish | Duration | Complete | Total float | Predecessors | Other |
| --- | --- | --- | --- | --- | --- | --- | --- | --- |
| 7 | **基本信息** |  | 2009-10-02 → 2009-10-03 (+1d) | 8d? → 9d? | 80% → 83% | 58d → 27d |  | was named 个人信息管理 |
| 8 | 个人设置 |  |  |  |  |  |  | was named 基本信息管理 |
| 12 | 虚拟房间后台管理 | 2009-10-01 A | 2009-10-02 A |  | 0% → 100% | 58d → none |  |  |
| 15 | **系统资源** | 2009-10-01 → 2009-09-29 A (-2d) | 2009-10-07 → 2009-10-12 (+5d) | 7d? → 14d? | 0% → 25% | 53d → 11d |  | was named 会议预约 |
| 17 | 资源占用情况 | 2009-10-06 → 2009-10-07 (+1d) | 2009-10-08 → 2009-10-09 (+1d) |  |  | 42d → 11d | none → 21 |  |
| 18 | 可用资源 | 2009-10-09 → 2009-10-10 (+1d) | 2009-10-11 → 2009-10-12 (+1d) |  |  | 42d → 11d |  |  |
| 19 | **会议管理** | 2009-09-29 A → 2009-10-02 (+3d) | 2009-10-18 → 2009-10-19 (+1d) | 20d? → 18d? | 13% → 0% | 42d → 5d |  | was named 资源管理 |
| 20 | 预约会议 | 2009-10-01 → 2009-10-02 (+1d) | 2009-10-03 → 2009-10-04 (+1d) |  |  | 53d → 11d | none → 14 |  |
| 22 | 正在召开的会议 | 2009-10-12 → 2009-10-13 (+1d) | 2009-10-13 → 2009-10-14 (+1d) |  |  | 42d → 11d |  |  |
| 23 | 当日会议安排 | 2009-10-14 → 2009-10-15 (+1d) | 2009-10-15 → 2009-10-16 (+1d) |  |  | 42d → 11d |  |  |
| 24 | 本周会议安排 | 2009-10-16 → 2009-10-17 (+1d) | 2009-10-16 → 2009-10-17 (+1d) |  |  | 42d → 11d |  |  |
| 25 | 本月会议安排 | 2009-10-17 → 2009-10-18 (+1d) | 2009-10-17 → 2009-10-18 (+1d) |  |  | 42d → 11d |  |  |
| 26 | 所有会议安排 | 2009-10-18 → 2009-10-19 (+1d) | 2009-10-18 → 2009-10-19 (+1d) |  |  | 42d → 11d |  |  |
| 27 | **统计分析** | 2009-10-16 → 2009-10-17 (+1d) | 2009-10-19 → 2009-10-20 (+1d) |  |  | 36d → 7d |  |  |
| 28 | 用户使用次数排行 | 2009-10-16 → 2009-10-17 (+1d) | 2009-10-17 → 2009-10-18 (+1d) |  |  | 36d → 5d | none → 23 |  |
| 29 | 用户会议召开次数排行 | 2009-10-18 → 2009-10-19 (+1d) | 2009-10-18 → 2009-10-19 (+1d) |  |  | 36d → 5d |  |  |
| 30 | 用户单日会议召开次数排行 | 2009-10-19 → 2009-10-20 (+1d) | 2009-10-19 → 2009-10-20 (+1d) |  |  | 36d → 5d |  |  |
| 31 | **日志管理** | 2009-10-20 → 2009-10-19 (-1d) | 2009-10-21 → 2009-10-20 (-1d) |  |  | 36d → 7d |  |  |
| 32 | 日志记录 | 2009-10-20 → 2009-10-19 (-1d) | 2009-10-20 → 2009-10-19 (-1d) |  |  | 36d → 7d | 30 → 28 | constraint start no earlier than 2009-10-20 → start no earlier than 2009-10-19 |
| 33 | 日志查询 | 2009-10-21 → 2009-10-20 (-1d) | 2009-10-21 → 2009-10-20 (-1d) |  |  | 36d → 7d |  |  |
| 34 | 外部系统 | 2009-10-22 → 2009-10-21 (-1d) | 2009-10-24 → 2009-10-23 (-1d) |  |  | 36d → 7d |  | constraint start no earlier than 2009-10-22 → start no earlier than 2009-10-21 |
| 35 | 系统测试 |  |  |  |  | 30d → 0d | 34 → none |  |
| 36 | 文档编写 | 2009-11-27 → 2009-10-27 (-31d) | 2009-11-30 → 2009-10-30 (-31d) |  |  |  |  | constraint start no earlier than 2009-11-27 → start no earlier than 2009-10-27 |

## Version 4 (saved 2009-10-07)

Last finish 2009-10-30 → 2009-11-03 (+4d). Complete tasks 10 → 18.

Added:

| ID | Task | Duration | Start | Finish | Predecessors | Constraint | Resources |
| --- | --- | --- | --- | --- | --- | --- | --- |
| 17 | 资源查询API | 1d | 2009-10-06 A | 2009-10-06 A |  | start no earlier than 2009-10-06 | 卢菊平 |
| 23 | 预约修改,查看,查询 | 1d | 2009-10-05 A | 2009-10-05 A | 14 | start no earlier than 2009-10-01 | 卢菊平 |
| 24 | 预约后台 | 2d | 2009-10-06 A | 2009-10-07 A | 23 | start no earlier than 2009-10-06 | 卢菊平 |
| 25 | 预约虚拟房间加载 | 1d | 2009-10-08 A | 2009-10-08 A | 24 | start no earlier than 2009-10-01 | 卢菊平 |
| 26 | 平台消息监听更新会议状态 | 1d | 2009-10-08 | 2009-10-08 | 22 | start no earlier than 2009-10-08 | 李海武 |
| 39 | 界面调整和美化 | 7d | 2009-10-21 | 2009-10-27 | 38 | start no earlier than 2009-09-21 | 李海武 |
| 40 | 手机短信 | 7d | 2009-10-28 | 2009-11-03 | 39 | start no earlier than 2009-10-21 | 李海武 |

Changed:

| ID | Task | Start | Finish | Duration | Complete | Total float | Predecessors | Other |
| --- | --- | --- | --- | --- | --- | --- | --- | --- |
| 7 | **基本信息** |  | 2009-10-03 → 2009-10-04 A (+1d) | 9d? → 10d? | 83% → 100% | 27d → none |  |  |
| 13 | 终端列表 | 2009-10-03 A | 2009-10-03 A |  | 0% → 100% | 57d → none |  |  |
| 14 | 参会单位 | 2009-10-01 → 2009-10-04 A (+3d) | 2009-10-01 → 2009-10-04 A (+3d) |  | 0% → 100% | 20d → none | 11 → 13 | resources 李海武 → 卢菊平 |
| 15 | **系统资源** |  |  | 14d? → 14d | 25% → 43% | 11d → 0d |  |  |
| 18 | 资源占用情况 | 2009-10-07 → 2009-10-09 (+2d) | 2009-10-09 → 2009-10-10 (+1d) | 3d? → 2d |  | 11d → 0d | 22 → 26 |  |
| 19 | 可用资源 | 2009-10-10 → 2009-10-11 (+1d) |  | 3d? → 2d |  | 11d → 0d |  |  |
| 20 | **会议管理** | 2009-10-02 → 2009-10-01 A (-1d) |  | 18d? → 19d | 0% → 53% | 5d → 15d |  |  |
| 21 | 预约会议 | 2009-10-02 → 2009-10-01 A (-1d) | 2009-10-04 → 2009-10-03 A (-1d) |  | 0% → 100% | 11d → none | 14 → 11 |  |
| 22 | 预约管理 | 2009-10-05 → 2009-10-06 A (+1d) | 2009-10-06 → 2009-10-07 A (+1d) | 2d? → 2d | 0% → 100% | 11d → none |  | constraint finish no earlier than 2009-10-05 → start no earlier than 2009-10-06 |
| 29 | 本周会议安排 |  |  | 1d? → 1d |  | 11d → 15d |  |  |
| 30 | 本月会议安排 |  |  | 1d? → 1d |  | 11d → 15d |  |  |
| 36 | **日志管理** |  |  | 2d? → 2d |  | 7d → 0d |  |  |
| 37 | 日志记录 |  |  | 1d? → 1d |  | 7d → 0d |  |  |
| 38 | 日志查询 |  |  | 1d? → 1d |  | 7d → 0d |  |  |
| 41 | 外部系统 |  |  | 3d? → 3d |  | 7d → 0d | 38 → 35, 38 | resources 李海武 → 卢菊平 |
| 42 | 系统测试,BUG修改,功能完善 | 2009-10-20 → 2009-10-24 (+4d) | 2009-10-26 → 2009-10-30 (+4d) | 7d? → 7d |  |  | none → 41 | was named 系统测试 |
| 43 | 文档编写 | 2009-10-27 → 2009-10-31 (+4d) | 2009-10-30 → 2009-11-03 (+4d) |  |  |  |  |  |

## Version 5 (saved 2009-10-12)

Last finish stays 2009-11-03. Complete tasks 18 → 21.

Changed:

| ID | Task | Start | Finish | Complete | Total float |
| --- | --- | --- | --- | --- | --- |
| 15 | **系统资源** |  | 2009-10-12 A | 43% → 100% | 0d → none |
| 18 | 资源占用情况 | 2009-10-09 A | 2009-10-10 A | 0% → 100% | 0d → none |
| 19 | 可用资源 | 2009-10-11 A | 2009-10-12 A | 0% → 100% | 0d → none |
| 20 | **会议管理** |  |  | 53% → 59% | 15d → 14d |
| 26 | 平台消息监听更新会议状态 | 2009-10-08 A | 2009-10-08 A | 0% → 100% | 0d → none |

## Version 6 (saved 2009-10-16)

Last finish stays 2009-11-03. Complete tasks 21 → 23.

Changed:

| ID | Task | Start | Finish | Complete | Total float |
| --- | --- | --- | --- | --- | --- |
| 20 | **会议管理** |  |  | 59% → 82% |  |
| 27 | 正在召开的会议 | 2009-10-13 A | 2009-10-14 A | 0% → 100% | 0d → none |
| 28 | 当日会议安排 | 2009-10-15 A | 2009-10-16 A | 0% → 100% | 0d → none |

## Version 7 (saved 2009-10-18)

Last finish stays 2009-11-03. Complete tasks 23 → 27.

Changed:

| ID | Task | Start | Finish | Complete | Total float |
| --- | --- | --- | --- | --- | --- |
| 20 | **会议管理** |  | 2009-10-19 A | 82% → 100% | 14d → none |
| 29 | 本周会议安排 | 2009-10-17 A | 2009-10-17 A | 0% → 100% | 15d → none |
| 30 | 本月会议安排 | 2009-10-18 A | 2009-10-18 A | 0% → 100% | 15d → none |
| 31 | 所有会议安排 | 2009-10-19 A | 2009-10-19 A | 0% → 100% | 11d → none |
| 32 | **统计分析** | 2009-10-17 A |  | 0% → 50% |  |
| 33 | 用户使用次数排行 | 2009-10-17 A | 2009-10-18 A | 0% → 100% | 0d → none |
