# 需求变更开发进度

How a schedule from MS Project changed from version to version. A marks actual dates.

## Version 1 (saved 2009-12-01)

| ID | WBS | Task | Duration | Start | Finish | Complete | Total float | Constraint |
| --- | --- | --- | --- | --- | --- | --- | --- | --- |
| 1 | 1 | **登陆页面修改** | 1d | 2009-11-27 A | 2009-11-27 A | 100% |  |  |
| 2 |  | 登陆页面修改 | 1d | 2009-11-27 A | 2009-11-27 A | 100% |  | start no earlier than 2009-11-27 |
| 3 | 2 | **菜单/权限调整** | 2d | 2009-11-28 | 2009-11-29 |  | 21d |  |
| 4 |  | 菜单/权限调整 | 2d | 2009-11-28 | 2009-11-29 |  | 3d | start no earlier than 2009-11-28 |
| 5 | 3 | **首页** | 5d? | 2009-11-30 | 2009-12-04 |  | 16d |  |
| 6 |  | 正在召开的会议 | 1d | 2009-11-30 | 2009-11-30 |  | 2d | start no earlier than 2009-11-30 |
| 7 |  | 近一段时间的会议安排 | 2d | 2009-12-01 | 2009-12-02 |  | 2d | start no earlier than 2009-12-01 |
| 8 |  | 会议预约安排图 | 1d? | 2009-12-03 | 2009-12-03 |  | 1d | start no earlier than 2009-12-03 |
| 9 |  | 弹出窗口的公告栏 | 1d? | 2009-12-04 | 2009-12-04 |  | 7d | start no earlier than 2009-12-04 |
| 10 | 4 | **系统资源浏览** | 12d? | 2009-12-05 | 2009-12-17 |  | 4d |  |
| 11 |  | MCU占用点数波动图 | 3d | 2009-12-05 | 2009-12-08 |  | 4d | start no earlier than 2009-12-05 |
| 12 |  | 用户使用次数排行 | 2d | 2009-12-09 | 2009-12-10 |  | 2d | start no earlier than 2009-12-09 |
| 13 |  | 会议统计次数排行 | 2d | 2009-12-11 | 2009-12-12 |  | 5d | start no earlier than 2009-12-11 |
| 14 |  | 各类型会议时间长度统计 | 2d | 2009-12-13 | 2009-12-14 |  | 3d | start no earlier than 2009-12-13 |
| 15 |  | 各会场会议时间长度统计 | 1d? | 2009-12-15 | 2009-12-15 |  | 2d | start no earlier than 2009-12-15 |
| 16 |  | 会议持续时间前10名统计 | 2d | 2009-12-16 | 2009-12-17 |  | 4d | start no earlier than 2009-12-16 |
| 17 | 5 | **个人会议预约** | 5d? | 2009-12-18 | 2009-12-22 |  | 1d |  |
| 18 |  | 预约会议表单项变更 | 1d? | 2009-12-18 | 2009-12-18 |  | 3d | start no earlier than 2009-12-18 |
| 19 |  | 表单存为表单模板 | 1d? | 2009-12-19 | 2009-12-19 |  | 2d | start no earlier than 2009-12-19 |
| 20 |  | 导出表单为文本文件 | 2d | 2009-12-20 | 2009-12-21 |  | 2d | start no earlier than 2009-12-20 |
| 21 |  | 为用户设定默认主会场及限制可选会场范围 | 1d? | 2009-12-22 | 2009-12-22 |  | 1d | start no earlier than 2009-12-22 |
| 22 | 6 | **用户个人信息管理** | 1d? | 2009-12-23 | 2009-12-23 |  | 0d |  |
| 23 |  | 用户个人信息管理 | 1d? | 2009-12-23 | 2009-12-23 |  | 0d | start no earlier than 2009-12-23 |

## Version 2 (saved 2009-12-03)

Last finish 2009-12-23 → 2009-12-20 (-3d). Complete tasks 1 → 3.

Added:

| ID | Task | Duration | Start | Finish | Predecessors | Constraint | Resources |
| --- | --- | --- | --- | --- | --- | --- | --- |
| 21 | **权限调整** | 18d | 2009-12-03 A | 2009-12-20 |  |  |  |
| 22 | 权限调整 | 1d | 2009-12-20 | 2009-12-20 | 20 | start no earlier than 2009-12-20 | Juping; Haiwu |
| 23 | 需求 | 5d | 2009-12-03 A | 2009-12-07 | 4 | start no earlier than 2009-11-03 | Juping |

Removed: 20 导出表单为文本文件; 22 用户个人信息管理; 23 用户个人信息管理

Changed:

| ID | Task | Start | Finish | Duration | Complete | Total float | Predecessors | Other |
| --- | --- | --- | --- | --- | --- | --- | --- | --- |
| 2 | 登陆页面修改 |  |  |  |  |  |  | resources none → Haiwu |
| 3 | **菜单调整** | 2009-11-28 → 2009-12-02 A (+4d) | 2009-11-29 → 2009-12-02 A (+3d) | 2d → 1d | 0% → 100% | 21d → none |  | was named 菜单/权限调整 |
| 4 | 菜单调整 | 2009-11-28 → 2009-12-02 A (+4d) | 2009-11-29 → 2009-12-02 A (+3d) | 2d → 1d | 0% → 100% | 3d → none |  | was named 菜单/权限调整; constraint start no earlier than 2009-11-28 → start no earlier than 2009-12-02; resources none → Juping |
| 5 | **首页** | 2009-11-30 → 2009-12-02 A (+2d) | 2009-12-04 → 2009-12-06 (+2d) | 5d? → 5d | 0% → 20% | 16d → 14d |  |  |
| 6 | 正在召开的会议 | 2009-11-30 → 2009-12-02 (+2d) | 2009-11-30 → 2009-12-02 (+2d) |  |  | 2d → 15d | none → 2 | constraint start no earlier than 2009-11-30 → start no earlier than 2009-12-02; resources none → Haiwu |
| 7 | 近一段时间的会议安排 | 2009-12-01 → 2009-12-03 (+2d) | 2009-12-02 → 2009-12-04 (+2d) |  |  | 2d → 15d | none → 6 | constraint start no earlier than 2009-12-01 → none; resources none → Haiwu |
| 8 | 会议预约安排图 | 2009-12-03 → 2009-12-05 (+2d) | 2009-12-03 → 2009-12-05 (+2d) | 1d? → 1d |  | 1d → 15d | none → 7 | constraint start no earlier than 2009-12-03 → finish no earlier than 2009-12-05; resources none → Haiwu |
| 9 | 弹出窗口的公告栏 | 2009-12-04 → 2009-12-06 A (+2d) | 2009-12-04 → 2009-12-06 A (+2d) | 1d? → 1d | 0% → 100% | 7d → none | none → 8 | constraint start no earlier than 2009-12-04 → finish no earlier than 2009-12-06; resources none → Haiwu |
| 10 | **系统资源浏览** | 2009-12-05 → 2009-12-07 (+2d) |  | 12d? → 11d |  | 4d → 0d |  |  |
| 11 | MCU占用点数波动图 | 2009-12-05 → 2009-12-07 (+2d) | 2009-12-08 → 2009-12-09 (+1d) |  |  | 4d → 0d | none → 9 | resources none → Haiwu |
| 12 | 用户使用次数排行 | 2009-12-09 → 2009-12-10 (+1d) | 2009-12-10 → 2009-12-11 (+1d) |  |  | 2d → 0d | none → 11 | constraint start no earlier than 2009-12-09 → start no earlier than 2009-12-08; resources none → Haiwu |
| 13 | 会议统计次数排行 | 2009-12-11 → 2009-12-12 (+1d) | 2009-12-12 → 2009-12-13 (+1d) |  |  | 5d → 0d | none → 12 | constraint start no earlier than 2009-12-11 → start no earlier than 2009-12-10; resources none → Haiwu |
| 14 | 各类型会议时间长度统计 | 2009-12-13 → 2009-12-14 (+1d) |  | 2d → 1d |  | 3d → 0d | none → 13 | constraint start no earlier than 2009-12-13 → finish no earlier than 2009-12-13; resources none → Haiwu |
| 15 | 各会场会议时间长度统计 |  |  | 1d? → 1d |  | 2d → 0d | none → 14 | constraint start no earlier than 2009-12-15 → finish no earlier than 2009-12-14; resources none → Haiwu |
| 16 | 会议持续时间前10名统计 |  |  |  |  | 4d → 0d | none → 15 | constraint start no earlier than 2009-12-16 → start no earlier than 2009-12-15; resources none → Haiwu |
| 17 | **个人会议预约** | 2009-12-18 → 2009-12-08 A (-10d) | 2009-12-22 → 2009-12-19 (-3d) | 5d? → 12d | 0% → 20% |  |  |  |
| 18 | 为用户设定默认主会场及限制可选会场范围 | 2009-12-22 → 2009-12-18 (-4d) | 2009-12-22 → 2009-12-18 (-4d) | 1d? → 1d |  | 1d → 0d | none → 16 | constraint start no earlier than 2009-12-22 → start no earlier than 2009-12-18; resources none → Haiwu |
| 19 | 表单模板 | 2009-12-19 → 2009-12-08 A (-11d) | 2009-12-19 → 2009-12-10 (-9d) | 1d? → 3d | 0% → 33% | 2d → 10d | none → 23 | was named 表单存为表单模板; constraint start no earlier than 2009-12-19 → start no earlier than 2009-12-08; resources none → Juping |
| 20 | 预约会议表单项变更 | 2009-12-18 → 2009-12-19 (+1d) | 2009-12-18 → 2009-12-19 (+1d) | 1d? → 1d |  | 3d → 0d | none → 18 | constraint start no earlier than 2009-12-18 → start no earlier than 2009-12-19; resources none → Haiwu |

## Version 3 (saved 2009-12-04)

Last finish stays 2009-12-20. Complete tasks 3 → 4.

Changed:

| ID | Task | Start | Finish | Complete | Total float |
| --- | --- | --- | --- | --- | --- |
| 5 | **首页** |  |  | 20% → 40% |  |
| 6 | 正在召开的会议 | 2009-12-02 A | 2009-12-02 A | 0% → 100% | 15d → none |

## Version 4 (saved 2009-12-06)

Last finish stays 2009-12-20. Complete tasks 4 → 5.

Changed:

| ID | Task | Start | Finish | Complete | Total float |
| --- | --- | --- | --- | --- | --- |
| 5 | **首页** |  |  | 40% → 80% |  |
| 7 | 近一段时间的会议安排 | 2009-12-03 A | 2009-12-04 A | 0% → 100% | 15d → none |

## Version 5 (saved 2009-12-07)

Last finish stays 2009-12-20. Complete tasks 5 → 7.

Added:

| ID | Task | Duration | Start | Finish | Constraint | Resources |
| --- | --- | --- | --- | --- | --- | --- |
| 24 | **系统优化** | 5d | 2009-12-05 A | 2009-12-09 |  |  |
| 25 | LOG输出优化 | 2d | 2009-12-05 A | 2009-12-06 A | start no earlier than 2009-12-05 | Juping |
| 26 | 集成优化 | 3d | 2009-12-07 A | 2009-12-09 | start no earlier than 2009-11-03 | Juping |

Changed:

| ID | Task | Start | Finish | Duration | Complete | Total float | Other |
| --- | --- | --- | --- | --- | --- | --- | --- |
| 5 | **首页** |  | 2009-12-06 A |  | 80% → 100% | 14d → none |  |
| 8 | 会议预约安排图 | 2009-12-05 A | 2009-12-05 A |  | 0% → 100% | 15d → none |  |
| 17 | **个人会议预约** |  |  |  | 20% → 40% |  |  |
| 19 | 表单模板 |  | 2009-12-10 → 2009-12-14 (+4d) |  | 33% → 67% | 10d → 6.99d |  |
| 21 | **权限调整** |  |  |  | 17% → 10% |  |  |
| 23 | 需求 |  | 2009-12-07 → 2009-12-11 (+4d) | 5d → 9d | 20% → 11% | 11d → 7.99d | constraint start no earlier than 2009-11-03 → finish no earlier than 2009-12-11 |

## Version 6 (saved 2009-12-15)

Last finish stays 2009-12-20. Complete tasks 7 → 9.

Changed:

| ID | Task | Start | Finish | Complete | Total float |
| --- | --- | --- | --- | --- | --- |
| 10 | **系统资源浏览** | 2009-12-07 A |  | 0% → 60% |  |
| 11 | MCU占用点数波动图 | 2009-12-07 A | 2009-12-09 A | 0% → 100% | 0d → none |
| 12 | 用户使用次数排行 | 2009-12-10 A | 2009-12-11 A | 0% → 100% | 0d → none |
| 13 | 会议统计次数排行 | 2009-12-12 A |  | 0% → 80% |  |

## Version 7 (saved 2009-12-16)

Last finish stays 2009-12-20. Complete tasks 9 → 10.

Changed:

| ID | Task | Start | Finish | Complete | Total float |
| --- | --- | --- | --- | --- | --- |
| 10 | **系统资源浏览** |  |  | 60% → 69% | 0d → 3d |
| 15 | 各会场会议时间长度统计 | 2009-12-15 A | 2009-12-15 A | 0% → 100% | 0d → none |

## Version 8 (saved 2009-12-17)

Last finish stays 2009-12-20. Complete tasks 10 → 13.

Changed:

| ID | Task | Start | Finish | Complete | Total float |
| --- | --- | --- | --- | --- | --- |
| 10 | **系统资源浏览** |  | 2009-12-17 A | 69% → 100% | 3d → none |
| 13 | 会议统计次数排行 |  | 2009-12-13 A | 80% → 100% | 6d → none |
| 14 | 各类型会议时间长度统计 | 2009-12-14 A | 2009-12-14 A | 0% → 100% | 6d → none |
| 16 | 会议持续时间前10名统计 | 2009-12-16 A | 2009-12-17 A | 0% → 100% | 0d → none |

## Version 9 (saved 2009-12-18)

Last finish stays 2009-12-20. Complete tasks 13 → 14.

Changed:

| ID | Task | Start | Finish | Complete | Total float |
| --- | --- | --- | --- | --- | --- |
| 17 | **个人会议预约** |  |  | 40% → 60% |  |
| 18 | 为用户设定默认主会场及限制可选会场范围 | 2009-12-18 A | 2009-12-18 A | 0% → 100% | 0d → none |

## Version 10 (saved 2009-12-19)

Last finish stays 2009-12-20. Complete tasks 14 → 15.

Changed:

| ID | Task | Finish | Complete | Total float |
| --- | --- | --- | --- | --- |
| 17 | **个人会议预约** |  | 60% → 80% | 1d → 0d |
| 19 | 表单模板 | 2009-12-14 A | 67% → 100% | 6.99d → none |
| 21 | **权限调整** |  | 10% → 63% |  |
| 23 | 需求 |  | 11% → 70% | 7.99d → 9d |
| 24 | **系统优化** |  | 60% → 70% |  |
| 26 | 集成优化 |  | 33% → 50% |  |

## Version 11 (saved 2009-12-25)

Last finish stays 2009-12-20. Complete tasks 15 → 18.

Changed:

| ID | Task | Start | Finish | Complete | Total float |
| --- | --- | --- | --- | --- | --- |
| 17 | **个人会议预约** |  | 2009-12-19 A | 80% → 100% | 0d → none |
| 20 | 预约会议表单项变更 | 2009-12-19 A | 2009-12-19 A | 0% → 100% | 0d → none |
| 21 | **权限调整** |  |  | 63% → 90% |  |
| 23 | 需求 |  | 2009-12-11 A | 70% → 100% | 9d → none |
| 24 | **系统优化** |  | 2009-12-09 A | 70% → 100% | 11d → none |
| 26 | 集成优化 |  | 2009-12-09 A | 50% → 100% | 11d → none |

## Version 12 (saved 2009-12-31)

Note of the change: update process, finished

Last finish stays 2009-12-20. Complete tasks 18 → 19.

Changed:

| ID | Task | Start | Finish | Complete | Total float |
| --- | --- | --- | --- | --- | --- |
| 21 | **权限调整** |  | 2009-12-20 A | 90% → 100% | 0d → none |
| 22 | 权限调整 | 2009-12-20 A | 2009-12-20 A | 0% → 100% | 0d → none |
