# 进度安排

How a schedule from MS Project changed from version to version. A marks actual dates.

## Version 1 (saved 2009-10-03)

| ID | WBS | Task | Duration | Start | Finish | Predecessors | Complete | Total float | Constraint |
| --- | --- | --- | --- | --- | --- | --- | --- | --- | --- |
| 1 | 1 | **公告栏** | 2d? | 2009-09-21 A | 2009-09-22 A |  | 100% |  |  |
| 2 |  | 公告发布,公告显示 | 1d? | 2009-09-21 A | 2009-09-21 A |  | 100% |  |  |
| 3 |  | 公告管理 | 1d? | 2009-09-22 A | 2009-09-22 A |  | 100% |  | start no earlier than 2009-09-22 |
| 4 | 2 | **留言板** | 2d? | 2009-09-23 A | 2009-09-24 A |  | 100% |  |  |
| 5 |  | 个人留言/查看留言/删除留言 | 1d? | 2009-09-23 A | 2009-09-23 A |  | 100% |  | start no earlier than 2009-09-23 |
| 6 |  | 管理员查看/删除留言 | 1d? | 2009-09-24 A | 2009-09-24 A | 5 | 100% |  | start no earlier than 2009-09-24 |
| 7 | 3 | **基本信息** | 10d? | 2009-09-25 A | 2009-10-04 A | 6 | 100% |  |  |
| 8 |  | 个人设置 | 1d? | 2009-09-25 A | 2009-09-25 A |  | 100% |  | start no earlier than 2009-09-25 |
| 9 |  | 基本信息后台管理 | 2d | 2009-09-26 A | 2009-09-27 A | 8 | 100% |  | start no earlier than 2009-09-25 |
| 10 |  | 修改密码 | 1d? | 2009-09-26 A | 2009-09-26 A | 9 | 100% |  | start no earlier than 2009-09-26 |
| 11 |  | 虚拟房间设置 | 4d | 2009-09-27 A | 2009-09-30 A | 10 | 100% |  | start no earlier than 2009-09-27 |
| 12 |  | 虚拟房间后台管理 | 2d | 2009-10-01 A | 2009-10-02 A | 11 | 100% |  | start no earlier than 2009-09-27 |
| 13 |  | 终端列表 | 1d | 2009-10-03 A | 2009-10-03 A | 12 | 100% |  | start no earlier than 2009-09-27 |
| 14 |  | 参会单位 | 1d | 2009-10-04 A | 2009-10-04 A | 13, 11 | 100% |  | start no earlier than 2009-09-27 |
| 15 | 4 | **系统资源** | 15d? | 2009-09-29 A | 2009-10-13 |  | 25% | 6d |  |
| 16 |  | 会议模板 | 2d | 2009-09-29 A | 2009-09-30 A |  | 100% |  | start no earlier than 2009-09-29 |
| 17 |  | 资源占用情况 | 3d? | 2009-10-08 | 2009-10-10 | 21 |  | 6d | start no earlier than 2009-10-06 |
| 18 |  | 可用资源 | 3d? | 2009-10-11 | 2009-10-13 | 17 |  | 6d | start no earlier than 2009-10-09 |
| 19 | 5 | **会议管理** | 20d? | 2009-10-01 A | 2009-10-20 |  | 25% | 10d |  |
| 20 |  | 预约会议 | 3d | 2009-10-01 A | 2009-10-03 | 11, 14 | 60% | 9.2d | start no earlier than 2009-10-01 |
| 21 |  | 预约管理 | 2d? | 2009-10-06 A | 2009-10-07 | 20 | 60% | 6d | start no earlier than 2009-10-06 |
| 22 |  | 正在召开的会议 | 2d | 2009-10-14 | 2009-10-15 | 18 |  | 6d | start no earlier than 2009-10-12 |
| 23 |  | 当日会议安排 | 2d | 2009-10-16 | 2009-10-17 | 22 |  | 6d | start no earlier than 2009-10-14 |
| 24 |  | 本周会议安排 | 1d? | 2009-10-18 | 2009-10-18 | 23 |  | 10d | start no earlier than 2009-10-16 |
| 25 |  | 本月会议安排 | 1d? | 2009-10-19 | 2009-10-19 | 24 |  | 10d | start no earlier than 2009-10-17 |
| 26 |  | 所有会议安排 | 1d | 2009-10-20 | 2009-10-20 | 25 |  | 10d | start no earlier than 2009-10-18 |
| 27 | 6 | **统计分析** | 4d | 2009-10-18 | 2009-10-21 |  |  | 6d |  |
| 28 |  | 用户使用次数排行 | 2d | 2009-10-18 | 2009-10-19 | 23 |  | 6d | start no earlier than 2009-10-16 |
| 29 |  | 用户会议召开次数排行 | 1d | 2009-10-20 | 2009-10-20 | 28 |  | 9d | start no earlier than 2009-10-18 |
| 30 |  | 用户单日会议召开次数排行 | 1d | 2009-10-21 | 2009-10-21 | 29 |  | 9d | start no earlier than 2009-10-19 |
| 31 | 7 | **日志管理** | 2d? | 2009-10-20 | 2009-10-21 |  |  | 6d |  |
| 32 |  | 日志记录 | 1d? | 2009-10-20 | 2009-10-20 | 28 |  | 6d | start no earlier than 2009-10-19 |
| 33 |  | 日志查询 | 1d? | 2009-10-21 | 2009-10-21 | 32 |  | 6d | start no earlier than 2009-09-26 |
| 34 |  | 外部系统 | 3d? | 2009-10-22 | 2009-10-24 | 33 |  | 6d | start no earlier than 2009-10-21 |
| 35 |  | 系统测试 | 7d? | 2009-10-20 | 2009-10-26 |  |  | 0d | start no earlier than 2009-10-20 |
| 36 |  | 文档编写 | 4d | 2009-10-27 | 2009-10-30 | 35 |  | 0d | start no earlier than 2009-10-27 |

## Version 2 (saved 2009-10-05)

Last finish stays 2009-10-30. Complete tasks 12 → 13.

Added:

| ID | Task | Duration | Start | Finish | Predecessors | Constraint | Resources |
| --- | --- | --- | --- | --- | --- | --- | --- |
| 22 | 预约修改,查看,查询 | 1d | 2009-10-05 A | 2009-10-05 A | 14 | start no earlier than 2009-10-01 | 卢菊平 |
| 23 | 预约后台 | 2d | 2009-10-06 A | 2009-10-07 | 22 | start no earlier than 2009-10-06 | 卢菊平 |
| 24 | 预约虚拟房间加载 | 1d | 2009-10-08 A | 2009-10-08 | 23 | start no earlier than 2009-10-01 | 卢菊平 |

Changed:

| ID | Task | Complete |
| --- | --- | --- |
| 19 | **会议管理** | 25% → 39% |

## Version 3 (saved 2009-10-06)

Last finish stays 2009-10-30. Complete tasks 13 → 16.

Added:

| ID | Task | Duration | Start | Finish | Predecessors | Constraint | Resources |
| --- | --- | --- | --- | --- | --- | --- | --- |
| 17 | 资源查询API | 1d | 2009-10-06 A | 2009-10-06 A |  | start no earlier than 2009-10-06 | 卢菊平 |
| 26 | 平台消息监听更新会议状态 | 1d | 2009-10-12 | 2009-10-12 | 22 | start no earlier than 2009-10-12 | 李海武 |

Changed:

| ID | Task | Start | Finish | Duration | Complete | Total float | Predecessors |
| --- | --- | --- | --- | --- | --- | --- | --- |
| 14 | 参会单位 |  |  |  |  |  | 13, 11 → 13 |
| 15 | **系统资源** |  | 2009-10-13 → 2009-10-16 (+3d) | 15d? → 18d | 25% → 43% | 6d → 3d |  |
| 18 | 资源占用情况 | 2009-10-08 → 2009-10-13 (+5d) | 2009-10-10 → 2009-10-14 (+4d) | 3d? → 2d |  | 6d → 3d | 22 → 26 |
| 19 | 可用资源 | 2009-10-11 → 2009-10-15 (+4d) | 2009-10-13 → 2009-10-16 (+3d) | 3d? → 2d |  | 6d → 3d |  |
| 20 | **会议管理** |  | 2009-10-20 → 2009-10-23 (+3d) | 20d? → 23d? | 39% → 41% | 10d → 7d |  |
| 24 | 预约后台 |  | 2009-10-07 A |  | 80% → 100% | 22d → none |  |
| 25 | 预约虚拟房间加载 |  | 2009-10-08 A |  | 70% → 100% | 22d → none |  |
| 27 | 正在召开的会议 | 2009-10-14 → 2009-10-17 (+3d) | 2009-10-15 → 2009-10-18 (+3d) |  |  | 6d → 3d |  |
| 28 | 当日会议安排 | 2009-10-16 → 2009-10-19 (+3d) | 2009-10-17 → 2009-10-20 (+3d) |  |  | 6d → 3d |  |
| 29 | 本周会议安排 | 2009-10-18 → 2009-10-21 (+3d) | 2009-10-18 → 2009-10-21 (+3d) |  |  | 10d → 7d |  |
| 30 | 本月会议安排 | 2009-10-19 → 2009-10-22 (+3d) | 2009-10-19 → 2009-10-22 (+3d) |  |  | 10d → 7d |  |
| 31 | 所有会议安排 | 2009-10-20 → 2009-10-23 (+3d) | 2009-10-20 → 2009-10-23 (+3d) |  |  | 10d → 7d |  |
| 32 | **统计分析** | 2009-10-18 → 2009-10-21 (+3d) | 2009-10-21 → 2009-10-24 (+3d) |  |  | 6d → 3d |  |
| 33 | 用户使用次数排行 | 2009-10-18 → 2009-10-21 (+3d) | 2009-10-19 → 2009-10-22 (+3d) |  |  | 6d → 3d |  |
| 34 | 用户会议召开次数排行 | 2009-10-20 → 2009-10-23 (+3d) | 2009-10-20 → 2009-10-23 (+3d) |  |  | 9d → 6d |  |
| 35 | 用户单日会议召开次数排行 | 2009-10-21 → 2009-10-24 (+3d) | 2009-10-21 → 2009-10-24 (+3d) |  |  | 9d → 6d |  |
| 36 | **日志管理** | 2009-10-20 → 2009-10-23 (+3d) | 2009-10-21 → 2009-10-24 (+3d) |  |  | 6d → 3d |  |
| 37 | 日志记录 | 2009-10-20 → 2009-10-23 (+3d) | 2009-10-20 → 2009-10-23 (+3d) |  |  | 6d → 3d |  |
| 38 | 日志查询 | 2009-10-21 → 2009-10-24 (+3d) | 2009-10-21 → 2009-10-24 (+3d) |  |  | 6d → 3d |  |
| 39 | 外部系统 | 2009-10-22 → 2009-10-25 (+3d) | 2009-10-24 → 2009-10-27 (+3d) |  |  | 6d → 3d |  |

## Version 4 (saved 2009-10-07)

Last finish stays 2009-10-30. Complete tasks 16 → 18.

Changed:

| ID | Task | Start | Finish | Duration | Complete | Total float | Other |
| --- | --- | --- | --- | --- | --- | --- | --- |
| 15 | **系统资源** |  | 2009-10-16 → 2009-10-12 (-4d) | 18d → 14d |  | 3d → 7d |  |
| 18 | 资源占用情况 | 2009-10-13 → 2009-10-09 (-4d) | 2009-10-14 → 2009-10-10 (-4d) |  |  | 3d → 7d |  |
| 19 | 可用资源 | 2009-10-15 → 2009-10-11 (-4d) | 2009-10-16 → 2009-10-12 (-4d) |  |  | 3d → 7d |  |
| 20 | **会议管理** |  | 2009-10-23 → 2009-10-19 (-4d) | 23d? → 19d? | 41% → 53% | 7d → 11d |  |
| 21 | 预约会议 |  | 2009-10-03 A |  | 60% → 100% | 9.2d → none |  |
| 22 | 预约管理 |  | 2009-10-07 A |  | 60% → 100% | 6d → none |  |
| 26 | 平台消息监听更新会议状态 | 2009-10-12 → 2009-10-08 (-4d) | 2009-10-12 → 2009-10-08 (-4d) |  |  | 18d → 7d | constraint start no earlier than 2009-10-12 → start no earlier than 2009-10-08 |
| 27 | 正在召开的会议 | 2009-10-17 → 2009-10-13 (-4d) | 2009-10-18 → 2009-10-14 (-4d) |  |  | 3d → 7d |  |
| 28 | 当日会议安排 | 2009-10-19 → 2009-10-15 (-4d) | 2009-10-20 → 2009-10-16 (-4d) |  |  | 3d → 7d |  |
| 29 | 本周会议安排 | 2009-10-21 → 2009-10-17 (-4d) | 2009-10-21 → 2009-10-17 (-4d) |  |  | 7d → 11d |  |
| 30 | 本月会议安排 | 2009-10-22 → 2009-10-18 (-4d) | 2009-10-22 → 2009-10-18 (-4d) |  |  | 7d → 11d |  |
| 31 | 所有会议安排 | 2009-10-23 → 2009-10-19 (-4d) | 2009-10-23 → 2009-10-19 (-4d) |  |  | 7d → 11d |  |
| 32 | **统计分析** | 2009-10-21 → 2009-10-17 (-4d) | 2009-10-24 → 2009-10-20 (-4d) |  |  | 3d → 7d |  |
| 33 | 用户使用次数排行 | 2009-10-21 → 2009-10-17 (-4d) | 2009-10-22 → 2009-10-18 (-4d) |  |  | 3d → 7d |  |
| 34 | 用户会议召开次数排行 | 2009-10-23 → 2009-10-19 (-4d) | 2009-10-23 → 2009-10-19 (-4d) |  |  | 6d → 10d |  |
| 35 | 用户单日会议召开次数排行 | 2009-10-24 → 2009-10-20 (-4d) | 2009-10-24 → 2009-10-20 (-4d) |  |  | 6d → 10d |  |
| 36 | **日志管理** | 2009-10-23 → 2009-10-19 (-4d) | 2009-10-24 → 2009-10-20 (-4d) |  |  | 3d → 7d |  |
| 37 | 日志记录 | 2009-10-23 → 2009-10-19 (-4d) | 2009-10-23 → 2009-10-19 (-4d) |  |  | 3d → 7d |  |
| 38 | 日志查询 | 2009-10-24 → 2009-10-20 (-4d) | 2009-10-24 → 2009-10-20 (-4d) |  |  | 3d → 7d |  |
| 39 | 外部系统 | 2009-10-25 → 2009-10-21 (-4d) | 2009-10-27 → 2009-10-23 (-4d) |  |  | 3d → 7d |  |

## Version 5 (saved 2009-10-08)

Last finish 2009-10-30 → 2009-11-03 (+4d). Complete tasks 18 → 19.

Added:

| ID | Task | Duration | Start | Finish | Predecessors | Constraint | Resources |
| --- | --- | --- | --- | --- | --- | --- | --- |
| 39 | 界面调整和美化 | 7d | 2009-10-21 | 2009-10-27 | 38 | start no earlier than 2009-09-21 | 李海武 |
| 40 | 手机短信 | 7d | 2009-10-28 | 2009-11-03 | 39 | start no earlier than 2009-10-21 | 李海武 |

Changed:

| ID | Task | Start | Finish | Duration | Complete | Total float | Predecessors | Other |
| --- | --- | --- | --- | --- | --- | --- | --- | --- |
| 20 | **会议管理** |  |  | 19d? → 19d | 53% → 59% | 11d → 14d |  |  |
| 21 | 预约会议 |  |  |  |  |  | 11, 14 → 11 |  |
| 22 | 预约管理 |  |  | 2d? → 2d |  |  |  |  |
| 26 | 平台消息监听更新会议状态 | 2009-10-08 A | 2009-10-08 A |  | 0% → 100% | 7d → none |  |  |
| 29 | 本周会议安排 |  |  | 1d? → 1d |  | 11d → 15d |  |  |
| 30 | 本月会议安排 |  |  | 1d? → 1d |  | 11d → 15d |  |  |
| 36 | **日志管理** |  |  | 2d? → 2d |  | 7d → 0d |  |  |
| 37 | 日志记录 |  |  | 1d? → 1d |  | 7d → 0d |  |  |
| 38 | 日志查询 |  |  | 1d? → 1d |  | 7d → 0d |  |  |
| 41 | 外部系统 |  |  | 3d? → 3d |  | 7d → 0d | 38 → 35, 38 | resources 李海武 → 卢菊平 |
| 42 | 系统测试,BUG修改,功能完善 | 2009-10-20 → 2009-10-24 (+4d) | 2009-10-26 → 2009-10-30 (+4d) | 7d? → 7d |  |  | none → 41 | was named 系统测试 |
| 43 | 文档编写 | 2009-10-27 → 2009-10-31 (+4d) | 2009-10-30 → 2009-11-03 (+4d) |  |  |  |  |  |

## Version 6 (saved 2009-10-10)

Last finish stays 2009-11-03.

Changed:

| ID | Task | Start | Complete |
| --- | --- | --- | --- |
| 15 | **系统资源** |  | 43% → 66% |
| 19 | 可用资源 | 2009-10-11 A | 0% → 80% |

## Version 7 (saved 2009-10-11)

Last finish stays 2009-11-03. Complete tasks 19 → 20.

Changed:

| ID | Task | Finish | Complete | Total float |
| --- | --- | --- | --- | --- |
| 15 | **系统资源** |  | 66% → 71% | 0d → 22d |
| 19 | 可用资源 | 2009-10-12 A | 80% → 100% | 0d → none |

## Version 8 (saved 2009-10-17)

Last finish stays 2009-11-03. Complete tasks 20 → 26.

Changed:

| ID | Task | Start | Finish | Complete | Total float |
| --- | --- | --- | --- | --- | --- |
| 15 | **系统资源** |  | 2009-10-12 A | 71% → 100% | 22d → none |
| 18 | 资源占用情况 | 2009-10-09 A | 2009-10-10 A | 0% → 100% | 1.6d → none |
| 20 | **会议管理** |  | 2009-10-19 A | 59% → 100% | 14d → none |
| 27 | 正在召开的会议 | 2009-10-13 A | 2009-10-14 A | 0% → 100% | 0d → none |
| 28 | 当日会议安排 | 2009-10-15 A | 2009-10-16 A | 0% → 100% | 0d → none |
| 29 | 本周会议安排 | 2009-10-17 A | 2009-10-17 A | 0% → 100% | 15d → none |
| 30 | 本月会议安排 | 2009-10-18 A | 2009-10-18 A | 0% → 100% | 15d → none |
| 31 | 所有会议安排 | 2009-10-19 A | 2009-10-19 A | 0% → 100% | 11d → none |

## Version 9 (saved 2009-10-20)

Last finish stays 2009-11-03. Complete tasks 26 → 29.

Changed:

| ID | Task | Start | Finish | Complete | Total float |
| --- | --- | --- | --- | --- | --- |
| 32 | **统计分析** | 2009-10-17 A |  | 0% → 50% |  |
| 33 | 用户使用次数排行 | 2009-10-17 A | 2009-10-18 A | 0% → 100% | 0d → none |
| 36 | **日志管理** | 2009-10-19 A | 2009-10-20 A | 0% → 100% | 0d → none |
| 37 | 日志记录 | 2009-10-19 A | 2009-10-19 A | 0% → 100% | 0d → none |
| 38 | 日志查询 | 2009-10-20 A | 2009-10-20 A | 0% → 100% | 0d → none |

## Version 10 (saved 2009-10-21)

Last finish 2009-11-03 → 2009-11-04 (+1d). Complete tasks 29 → 31.

Changed:

| ID | Task | Start | Finish | Duration | Complete | Total float |
| --- | --- | --- | --- | --- | --- | --- |
| 32 | **统计分析** |  | 2009-10-20 → 2009-10-21 A (+1d) | 4d → 5d | 50% → 100% | 0d → none |
| 34 | 用户会议召开次数排行 | 2009-10-19 → 2009-10-20 A (+1d) | 2009-10-19 → 2009-10-20 A (+1d) |  | 0% → 100% | 0d → none |
| 35 | 用户单日会议召开次数排行 | 2009-10-20 → 2009-10-21 A (+1d) | 2009-10-20 → 2009-10-21 A (+1d) |  | 0% → 100% | 0d → none |
| 41 | 外部系统 | 2009-10-21 → 2009-10-22 (+1d) | 2009-10-23 → 2009-10-24 (+1d) |  |  |  |
| 42 | 系统测试,BUG修改,功能完善 | 2009-10-24 → 2009-10-25 (+1d) | 2009-10-30 → 2009-10-31 (+1d) |  |  |  |
| 43 | 文档编写 | 2009-10-31 → 2009-11-01 (+1d) | 2009-11-03 → 2009-11-04 (+1d) |  |  |  |
